Schedule from MS Project, 2011-11-04 to 2012-02-17, A marks actual dates.

## Calendars

- Standard: Mon-Fri 08:00-12:00, 13:00-17:00; Sat-Sun off.

## Resources

| Resource | Group |
| --- | --- |
| Kramchaninov, Pavel | Киевский филиал |
| Ilin, Pavel | Одесский филиал |
| Skidanov, Kirill | Одесский филиал |
| Lobashevskiy, Dmitriy | Одесский филиал |
| Plachkov, Vyacheslav | Одесский филиал |
| Krupsky Vladimir | СПб |
| Dolmatova Oksana | Питерский филиал |
| Derbikov Andrey | СПб филиал |
| Bratanova Elena | Питерский филиал |
| Shvalik Yuriy | Одесский отдел Центра специальных систем |
| Khait Konstantin |  |
| Saenko Elena | Одесский филиал |
| Mikhail Prossuntsov | СПб |
| Derbikov Andrey |  |

## Schedule

| ID | WBS | Task | Type | Duration | Start | Finish | Complete | Remaining | Total slack | Resources | Work | Actual work |
| --- | --- | --- | --- | --- | --- | --- | --- | --- | --- | --- | --- | --- |
| 1 | 1 | **AXIS Car Home demo application v1.0** |  | 25d | 2011-11-22 A | 2011-12-26 | 67% | 8.37d | 0d |  | 992h | 660h |
| 2 | 1.1 | **HU Car Home application** |  | 25d | 2011-11-22 A | 2011-12-26 | 51% | 12.29d |  |  | 240h | 122h |
| 3 | 1.1.1 | Basic application with navigation bar (no design) | manual | 3d | 2011-11-22 A | 2011-11-24 A | 100% |  |  | Plachkov, Vyacheslav | 24h | 24h |
| 4 | 1.1.2 | Media application (no design) | manual | 2d | 2011-11-25 A | 2011-11-28 A | 100% |  |  | Plachkov, Vyacheslav | 16h | 16h |
| 5 | 1.1.3 | Browser application (no design) | manual | 2d | 2011-11-29 A | 2011-11-30 A | 100% |  |  | Plachkov, Vyacheslav | 16h | 16h |
| 6 | 1.1.4 | Google maps Navigation application (no design) | manual | 3d | 2011-12-02 A | 2011-12-06 | 50% | 1.5d |  | Plachkov, Vyacheslav | 24h | 12h |
| 7 | 1.1.5 | Adaptation of Demo application to the graphical design | manual | 3d | 2011-12-07 A | 2011-12-09 | 25% | 2.25d |  | Plachkov, Vyacheslav | 24h | 6h |
| 8 | 1.1.6 | AXIS integration to media player | manual | 8d | 2011-12-12 A | 2011-12-21 | 50% | 4d |  | Plachkov, Vyacheslav | 64h | 32h |
| 9 | 1.1.7 | Updating of generic VNC lib functionality for Linux | manual | 3d | 2011-12-20 A | 2011-12-22 | 25% | 2.25d |  | Skidanov, Kirill | 24h | 6h |
| 10 | 1.1.8 | AXIS screen sharing integration to other applications | manual | 1d | 2011-12-23 | 2011-12-23 |  |  |  | Plachkov, Vyacheslav | 8h |  |
| 11 | 1.1.9 | Testing, bug-fixing | manual | 5d | 2011-12-19 A | 2011-12-26 | 25% | 3.75d |  | Plachkov, Vyacheslav | 40h | 10h |
| 12 | 1.2 | **Android Car Home application** |  | 25d | 2011-11-22 A | 2011-12-26 | 48% | 13.09d | 0d |  | 256h | 122h |
| 13 | 1.2.1 | Basic application with navigation bar (no design) | manual | 3d | 2011-11-22 A | 2011-11-24 A | 100% |  |  | Kramchaninov, Pavel | 24h | 24h |
| 14 | 1.2.2 | Media application (no design) | manual | 2d | 2011-11-25 A | 2011-11-28 A | 100% |  |  | Kramchaninov, Pavel | 16h | 16h |
| 15 | 1.2.3 | Browser application (no design) | manual | 2d | 2011-11-29 A | 2011-11-30 A | 100% |  |  | Kramchaninov, Pavel | 16h | 16h |
| 16 | 1.2.4 | Navigation application (no design) | manual | 2d | 2011-12-01 A | 2011-12-02 | 75% | 0.5d |  | Kramchaninov, Pavel | 16h | 12h |
| 17 | 1.2.5 | Adaptation of Demo application to the graphical design | manual | 5d | 2011-12-05 A | 2011-12-09 | 50% | 2.5d |  | Kramchaninov, Pavel | 40h | 20h |
| 18 | 1.2.6 | AXIS integration to media player | manual | 8d | 2011-12-12 A | 2011-12-21 | 25% | 6d |  | Kramchaninov, Pavel | 64h | 16h |
| 19 | 1.2.7 | Updating of generic VNC lib functionality for Android | manual | 3d | 2011-12-20 A | 2011-12-22 | 25% | 2.25d |  | Ilin, Pavel | 24h | 6h |
| 20 | 1.2.8 | AXIS screen sharing integration to other applications | manual | 1d | 2011-12-22 | 2011-12-22 |  |  |  | Kramchaninov, Pavel | 8h |  |
| 21 | 1.2.9 | Testing, bug-fixing | manual | 6d | 2011-12-19 A | 2011-12-26 | 25% | 4.5d |  | Kramchaninov, Pavel | 48h | 12h |
| 22 | 1.3 | **HAL/L0 enhancements** |  | 9d | 2011-11-29 A | 2011-12-09 A | 100% |  |  |  | 72h | 72h |
| 23 | 1.3.1 | Request another AXIS side by which IP adress we're visible | manual | 1d | 2011-11-29 A | 2011-11-29 A | 100% |  |  | Ilin, Pavel | 8h | 8h |
| 24 | 1.3.2 | Add verification if application is already running on other side | manual | 8d | 2011-11-30 A | 2011-12-09 A | 100% |  |  | Ilin, Pavel | 64h | 64h |

Notes:
- 6: На данном этапе роль навигации будет исполнять Google Maps просто запущенный через Браузер
- 16: На данном этапе роль навигации будет исполнять Google Maps запускаемый как отдельное приложение

| ID | WBS | Task | Type | Duration | Start | Finish | Complete | Remaining | Total slack | Resources | Work | Actual work |
| --- | --- | --- | --- | --- | --- | --- | --- | --- | --- | --- | --- | --- |
| 25 | 1.4 | **Freescale HU set-up** |  | 23d | 2011-11-24 A | 2011-12-26 | 81% | 4.38d | 0d |  | 168h | 136h |
| 26 | 1.4.1 | Prepare and install proper Ubuntu configuration | manual | 5d | 2011-11-24 A | 2011-11-30 A | 100% |  |  | Derbikov Andrey | 40h | 40h |
| 27 | 1.4.2 | Configure Ubuntu environment | manual | 3d | 2011-12-01 A | 2011-12-05 A | 100% |  |  | Derbikov Andrey | 24h | 24h |
| 28 | 1.4.3 | Run AXIS baseline on HU | manual | 5d | 2011-12-06 A | 2011-12-12 A | 100% |  |  | Derbikov Andrey | 40h | 40h |
| 29 | 1.4.4 | Configure and run Wi-Fi module | manual | 6d | 2011-12-15 A | 2011-12-22 | 50% | 3d |  | Derbikov Andrey | 48h | 24h |
| 30 | 1.4.5 | AXIS baseline testing, problem reporting to Odessa team | manual | 2d | 2011-12-23 A | 2011-12-26 | 50% | 1d |  | Derbikov Andrey | 16h | 8h |
| 31 | 1.5 | **Design preparation** |  | 9d | 2011-12-12 A | 2011-12-22 | 89% | 1d | 0d |  | 72h | 64h |
| 32 | 1.5.1 | Finalise DriveDorid design for Ubuntu | manual | 5d | 2011-12-12 A | 2011-12-16 A | 100% |  |  | Dolmatova Oksana | 40h | 40h |
| 33 | 1.5.2 | Make picture cutting | manual | 4d | 2011-12-19 A | 2011-12-22 | 75% | 1d |  | Dolmatova Oksana | 32h | 24h |
| 34 | 1.6 | **Processes preparation** |  | 22d | 2011-11-24 A | 2011-12-23 | 78% | 4.78d | 0d |  | 184h | 144h |
| 35 | 1.6.1 | Project introduction | manual | 2d | 2011-11-24 A | 2011-11-25 A | 100% |  |  | Saenko Elena | 16h | 16h |
| 36 | 1.6.2 | AXIS documentation research | manual | 2d | 2011-11-28 A | 2011-11-29 A | 100% |  |  | Saenko Elena | 16h | 16h |
| 37 | 1.6.3 | Requirements management definition | manual | 3d | 2011-11-30 A | 2011-12-02 A | 100% |  |  | Saenko Elena | 24h | 24h |
| 38 | 1.6.4 | Specification and traceability creation | manual | 5d | 2011-12-05 A | 2011-12-09 A | 100% |  |  | Saenko Elena | 40h | 40h |
| 39 | 1.6.5 | Creation of test scenarios lists | manual | 5d | 2011-12-12 A | 2011-12-16 | 50% | 2.5d |  | Saenko Elena | 40h | 20h |
| 40 | 1.6.6 | Test plan definition | manual | 5d | 2011-12-19 A | 2011-12-23 | 50% | 2.5d |  | Saenko Elena | 40h | 20h |
| 41 | 1.6.7 | Prepare CMP document | manual | 1d | 2011-12-09 A | 2011-12-09 A | 100% |  |  | Derbikov Andrey | 8h | 8h |
| 43 | 2 | **AXIS Car Home demo application v1.5** |  | 14d | 2011-12-27 | 2012-01-13 |  |  | 0d |  | 456h |  |
| 44 | 2.1 | **HU Car Home application enhancement** |  | 14d | 2011-12-27 | 2012-01-13 |  |  | 0d |  | 112h |  |
| 45 | 2.1.1 | Testing, bug-fixing | manual | 14d | 2011-12-27 | 2012-01-13 |  |  |  | Plachkov, Vyacheslav | 112h |  |
| 46 | 2.2 | **Android Car Home application enhancement** |  | 14d | 2011-12-27 | 2012-01-13 |  |  | 0d |  | 112h |  |
| 47 | 2.2.1 | Testing, bug-fixing | manual | 12d | 2011-12-27 | 2012-01-11 |  |  |  | Kramchaninov, Pavel | 96h |  |
| 48 | 2.2.2 | Preparation for Android market promotion | manual | 2d | 2012-01-12 | 2012-01-13 |  |  |  | Kramchaninov, Pavel | 16h |  |
| 49 | 2.3 | **Car Home application HU testing** |  | 14d | 2011-12-27 | 2012-01-13 |  |  | 0d |  | 232h |  |
| 50 | 2.3.1 | AXIS baseline testing, problem reporting to Odessa team | manual | 14d | 2011-12-27 | 2012-01-13 |  |  |  | Bratanova Elena; Dolmatova Oksana | 224h |  |
| 51 | 2.3.2 | Conduct demonstration for Electrobit | manual | 1d | 2011-12-29 | 2011-12-29 |  |  |  | Shvalik Yuriy | 8h |  |

| ID | WBS | Task | Type | Duration | Start | Finish | Complete | Remaining | Total slack | Resources | Work | Actual work |
| --- | --- | --- | --- | --- | --- | --- | --- | --- | --- | --- | --- | --- |
| 53 | 3 | **AXIS Car Home demo application v2.0** |  | 75d | 2011-11-04 A | 2012-02-16 | 20% | 59.72d | 0d |  | 632h | 128.8h |
| 54 | 3.1 | Daemons communication reconnect in case of carrier drop | manual | 4d | 2012-01-03 | 2012-01-06 |  |  |  | Ilin, Pavel | 32h |  |
| 55 | 3.2 | Enable Wi-Fi connection between 2 sides through AXIS | manual | 4d | 2012-01-09 | 2012-01-12 |  |  |  | Ilin, Pavel | 32h |  |
| 56 | 3.3 | **VNC lib integration into VNC profile** |  | 8d | 2012-01-13 | 2012-01-24 |  |  | 0d |  | 64h |  |
| 57 | 3.3.1 | VNC lib code adaptation for frame-buffer addressing | manual | 6d | 2012-01-13 | 2012-01-20 |  |  |  | Ilin, Pavel | 48h |  |
| 58 | 3.3.2 | Lib integration to VNC profile | manual | 2d | 2012-01-23 | 2012-01-24 |  |  |  | Ilin, Pavel | 16h |  |
| 59 | 3.4 | **VNC Speed Optimisation** |  | 15d | 2011-12-27 | 2012-01-16 |  |  | 0d |  | 120h |  |
| 60 | 3.4.1 | Knowledge overtaking from Pilin about the problem | manual | 1d | 2011-12-27 | 2011-12-27 |  |  |  | Derbikov Andrey | 8h |  |
| 61 | 3.4.2 | VCN client code investigation | manual | 5d | 2011-12-28 | 2012-01-03 |  |  |  | Derbikov Andrey | 40h |  |
| 62 | 3.4.3 | Problem understanding | manual | 2d | 2012-01-04 | 2012-01-05 |  |  |  | Derbikov Andrey | 16h |  |
| 63 | 3.4.4 | Finding solution | manual | 1d | 2012-01-06 | 2012-01-06 |  |  |  | Derbikov Andrey | 8h |  |
| 64 | 3.4.5 | Problem fixing | manual | 6d | 2012-01-09 | 2012-01-16 |  |  |  | Derbikov Andrey | 48h |  |
| 65 | 3.5 | **PAD refactoring** |  | 11d | 2011-12-20 A | 2012-01-03 | 57% | 4.77d | 0d |  | 72h | 40.8h |
| 66 | 3.5.1 | Lib Event integration | manual | 2d | 2011-12-20 A | 2011-12-21 | 85% | 0.3d |  | Lobashevskiy, Dmitriy | 16h | 13.6h |
| 67 | 3.5.2 | Socket refactoring | manual | 2d | 2011-12-22 A | 2011-12-23 | 85% | 0.3d |  | Lobashevskiy, Dmitriy | 16h | 13.6h |
| 68 | 3.5.3 | New socket interfaces definition | manual | 2d | 2011-12-26 A | 2011-12-27 | 85% | 0.3d |  | Lobashevskiy, Dmitriy | 16h | 13.6h |
| 69 | 3.5.4 | Testing | manual | 2d | 2011-12-28 | 2012-01-02 |  |  |  | Lobashevskiy, Dmitriy | 16h |  |
| 70 | 3.5.5 | PAD interface adaptation after refactoring | manual | 1d | 2012-01-03 | 2012-01-03 |  |  |  | Lobashevskiy, Dmitriy | 8h |  |
| 71 | 3.6 | **Code generator finalization** |  | 48d | 2011-11-04 A | 2012-01-10 | 73% | 12.92d | 0d |  | 104h | 76h |
| 72 | 3.6.1 | Interfaces generation for C | manual | 4d | 2011-11-22 A | 2011-11-25 A | 100% |  |  | Lobashevskiy, Dmitriy | 32h | 32h |
| 73 | 3.6.2 | Interfaces generation for Java | manual | 4d | 2011-11-04 A | 2011-11-09 | 75% | 1d |  | Lobashevskiy, Dmitriy | 32h | 24h |
| 74 | 3.6.3 | Testing | manual | 5d | 2012-01-04 A | 2012-01-10 | 50% | 2.5d |  | Lobashevskiy, Dmitriy | 40h | 20h |
| 75 | 3.7 | **Profile repository** |  | 11d | 2012-01-11 | 2012-01-25 |  |  | 0d |  | 88h |  |
| 76 | 3.7.1 | Profile repository definition | manual | 5d | 2012-01-11 | 2012-01-17 |  |  |  | Lobashevskiy, Dmitriy | 40h |  |
| 77 | 3.7.2 | Definition of profile list based on HU/Android configuration | manual | 2d | 2012-01-18 | 2012-01-19 |  |  |  | Lobashevskiy, Dmitriy | 16h |  |

Notes:
- 56: Библиотека VNC должна быть интегрирована в VNC profile. То есть не должно быть необходимости вначале устанавливать VNC клиент. VNC должен быть "спрятан" внутри профайла
- 70: Поменялись интерфейсы кодогенератора. Необходимо возобновить соотвесвие их с PDA-ом. Применить namespaces

| ID | WBS | Task | Type | Duration | Start | Finish | Complete | Remaining | Total slack | Resources | Work | Actual work |
| --- | --- | --- | --- | --- | --- | --- | --- | --- | --- | --- | --- | --- |
| 78 | 3.7.3 | **Axis queue** |  | 4d | 2012-01-20 | 2012-01-25 |  |  | 0d |  | 32h |  |
| 79 | 3.7.3.1 | Axis queue architucture preparation | manual | 2d | 2012-01-20 | 2012-01-23 |  |  |  | Lobashevskiy, Dmitriy | 16h |  |
| 80 | 3.7.3.2 | Implementation and integration with RPC | manual | 2d | 2012-01-24 | 2012-01-25 |  |  |  | Lobashevskiy, Dmitriy | 16h |  |
| 81 | 3.8 | Remote file system profile | manual | 3d | 2012-01-26 A | 2012-01-31 | 50% | 1.5d |  | Lobashevskiy, Dmitriy | 24h | 12h |
| 82 | 3.9 | Audio/Video remote control profile | manual | 3d | 2012-02-01 | 2012-02-03 |  |  |  | Lobashevskiy, Dmitriy | 24h |  |
| 83 | 3.10 | Voice command transition profile | manual | 5d | 2012-02-06 | 2012-02-10 |  |  |  | Lobashevskiy, Dmitriy | 40h |  |
| 84 | 3.11 | Application repository | manual | 4d | 2012-02-13 | 2012-02-16 |  |  |  | Lobashevskiy, Dmitriy | 32h |  |
| 86 | 4 | **Process activities** |  | 12d | 2011-12-12 A | 2011-12-27 | 45% | 6.6d | 0d |  | 96h | 43.2h |
| 87 | 4.1 | **Move SVN to gitHUB** |  | 12d | 2011-12-12 A | 2011-12-27 | 45% | 6.6d | 0d |  | 96h | 43.2h |
| 88 | 4.1.1 | Test access and possible infrastructure problems from Odessa and Piter locations | manual | 1d | 2011-12-12 A | 2011-12-12 A | 100% |  |  | Bratanova Elena | 8h | 8h |
| 89 | 4.1.2 | Move up-to-date baseline version to gitHub | manual | 2d | 2011-12-13 A | 2011-12-14 | 50% | 1d |  | Bratanova Elena | 16h | 8h |
| 90 | 4.1.3 | Prepare process description document | manual | 4d | 2011-12-15 A | 2011-12-20 | 85% | 0.6d |  | Bratanova Elena | 32h | 27.2h |
| 91 | 4.1.4 | Try first submits, make branches integration back to baseline repository | manual | 3d | 2011-12-21 | 2011-12-23 |  |  |  | Bratanova Elena | 24h |  |
| 92 | 4.1.5 | Make final review and acceptance of CMP | manual | 2d | 2011-12-26 | 2011-12-27 |  |  |  | Mikhail Prossuntsov | 16h |  |
| 94 | 5 | **Marketing** |  | 23d | 2011-12-15 A | 2012-01-16 | 18% | 18.84d | 0d |  | 816h | 208h |
| 95 | 5.1 | **Marketing presentation** |  | 9d | 2011-12-15 A | 2011-12-27 | 39% | 5.5d | 0d |  | 160h | 56h |
| 96 | 5.1.1 | AXIS marketing presentation preparation | manual | 7d | 2011-12-15 A | 2011-12-23 | 50% | 3.5d |  | Khait Konstantin; Mikhail Prossuntsov | 112h | 56h |
| 97 | 5.1.2 | Verification and review | manual | 2d | 2011-12-26 | 2011-12-27 |  |  |  | Khait Konstantin; Mikhail Prossuntsov; Shvalik Yuriy | 48h |  |
| 98 | 5.2 | **Demo video** |  | 20d | 2011-12-16 | 2012-01-12 |  |  |  |  | 136h |  |
| 99 | 5.2.1 | Schedule activities with video operator | manual | 2d | 2011-12-21 | 2011-12-22 |  |  |  | Mikhail Prossuntsov | 16h |  |
| 100 | 5.2.2 | Find actors | manual | 3d | 2011-12-23 | 2011-12-27 |  |  |  | Mikhail Prossuntsov | 24h |  |
| 101 | 5.2.3 | Finalise script | manual | 4d | 2011-12-28 | 2012-01-02 |  |  |  | Mikhail Prossuntsov | 32h |  |
| 102 | 5.2.4 | Shoot video | manual | 2d | 2012-01-03 | 2012-01-04 |  |  |  | Mikhail Prossuntsov | 16h |  |
| 103 | 5.2.5 | Post-production | manual | 5d | 2012-01-05 | 2012-01-11 |  |  |  | Mikhail Prossuntsov | 40h |  |
| 104 | 5.2.6 | Review | manual | 1d | 2012-01-12 | 2012-01-12 |  |  |  | Mikhail Prossuntsov | 8h |  |

Notes:
- 98: Обсудить втроем сценарий и как этот ролик вообще можно снимать. Хорошо бы снять простое видео в лаборатории, которое показывает просто технологии

| ID | WBS | Task | Type | Duration | Start | Finish | Predecessors | Complete | Remaining | Total slack | Resources | Work | Actual work |
| --- | --- | --- | --- | --- | --- | --- | --- | --- | --- | --- | --- | --- | --- |
| 105 | 5.3 | **Axis web portal preparation** |  | 23d | 2011-12-15 A | 2012-01-16 |  | 8% | 21.08d | 0d | Mikhail Prossuntsov | 432h | 112h |
| 106 | 5.3.1 | Arange domain name AXISautomotive | manual | 2d | 2011-12-15 A | 2011-12-16 A |  | 100% |  |  | Mikhail Prossuntsov | 16h | 16h |
| 107 | 5.3.2 | Evaluate and prepare content | manual | 7d | 2011-12-22 | 2011-12-30 |  |  |  |  | Mikhail Prossuntsov; Shvalik Yuriy | 112h |  |
| 108 | 5.3.3 | Portal design preparation with Luxoft marketing | manual | 5d | 2011-12-22 | 2011-12-28 |  |  |  |  | Dolmatova Oksana | 40h |  |
| 109 | 5.3.4 | Site coding | manual | 5d | 2012-01-03 | 2012-01-09 |  |  |  |  | Mikhail Prossuntsov | 40h |  |
| 110 | 5.3.5 | Verification and testing | manual | 5d | 2012-01-10 | 2012-01-16 |  |  |  |  | Mikhail Prossuntsov | 40h |  |
| 111 | 5.4 | **Documentation update** |  | 8d | 2011-12-19 A | 2011-12-28 |  | 63% | 3d | 0d |  | 88h | 40h |
| 112 | 5.4.1 | Review and update AXIS architecture document | manual | 5d | 2011-12-19 A | 2011-12-23 A |  | 100% |  |  | Mikhail Prossuntsov | 40h | 40h |
| 113 | 5.4.2 | Review and verification | manual | 3d | 2011-12-26 | 2011-12-28 |  |  |  |  | Khait Konstantin; Shvalik Yuriy | 48h |  |
| 115 | 6 | **Releases** |  | 38d | 2011-12-27 | 2012-02-17 |  |  |  | 0d |  | 664h |  |
| 116 | 6.1 | Release R1 | milestone, manual | 0d | 2011-12-27 | 2011-12-27 | 1 |  |  |  |  |  |  |
| 117 | 6.2 | Release R2 | milestone, manual | 0d | 2012-01-16 | 2012-01-16 | 43 |  |  |  |  |  |  |
| 118 | 6.3 | Release R3 | milestone, manual | 0d | 2012-02-17 | 2012-02-17 | 53 |  |  |  |  |  |  |
| 119 | 6.4 | Demo video readiness | milestone, manual | 0d | 2012-01-13 | 2012-01-13 | 98 |  |  |  |  |  |  |
| 120 | 6.5 | Web Portal readiness | milestone, manual | 0d | 2012-01-17 | 2012-01-17 | 105 |  |  |  |  |  |  |
| 121 | 6.6 | Marketing presentation readiness | milestone, manual | 0d | 2011-12-28 | 2011-12-28 | 95 |  |  |  |  |  |  |
| 122 | 6.7 | Architecture document readiness | milestone, manual | 0d | 2011-12-29 | 2011-12-29 | 111 |  |  |  |  |  |  |
| 124 | 6.8 | **Dates to be assigned** |  | 1d | 2011-12-27 | 2011-12-27 |  |  |  |  |  | 664h |  |
| 125 | 6.8.1 | IP Radio feature implementation in Media player | manual | 3d | 2011-12-27 | 2011-12-29 |  |  |  |  |  |  |  |
| 126 | 6.8.2 | Comfort application implementation | manual | 4d | 2011-12-27 | 2011-12-30 |  |  |  |  |  |  |  |
| 127 | 6.8.3 | Diagnosis application implementation | manual | 4d | 2011-12-27 | 2011-12-30 |  |  |  |  |  |  |  |
| 128 | 6.8.4 | Profiles signment by sertificates definition | manual | 1d | 2011-12-27 | 2011-12-27 |  |  |  |  |  |  |  |
| 129 | 6.8.5 | IOS | manual | 1d? | 2011-12-27 | 2011-12-27 |  |  |  |  |  |  |  |
| 130 | 6.8.6 | Переведение WiKi в порядок | manual | 1d? | 2011-12-27 | 2011-12-27 |  |  |  |  |  |  |  |
| 131 | 6.8.7 | Verification of Android side by Mihail | manual | 1d? | 2011-12-27 | 2011-12-27 |  |  |  |  |  |  |  |
| 132 | 6.8.8 | DRM existing standarts analyses | manual | 1d? | 2011-12-27 | 2011-12-27 |  |  |  |  | Derbikov Andrey | 8h |  |
| 133 | 6.8.9 | Алгоритм авторизации Out of Band устройств | manual | 1d? | 2011-12-27 | 2011-12-27 |  |  |  |  |  |  |  |
| 134 | 6.8.10 | Параметрический анализ Clud Services. Где лучше разместить сайт | manual | 1d? | 2011-12-27 | 2011-12-27 |  |  |  |  |  |  |  |
| 135 | 6.8.11 | Описание Use Cases по правильному пэйрингу HU и AXIS | manual | 1d? | 2011-12-27 | 2011-12-27 |  |  |  |  |  |  |  |
| 136 | 6.8.12 | Поддержка в Андроид части DriveDroid различных разрешений (масштабирование текстур) | manual | 1d? | 2011-12-27 | 2011-12-27 |  |  |  |  | Kramchaninov, Pavel | 8h |  |

Notes:
- 132: Необходимо понять какие есть стандарты в индустрии на данный момент

| ID | WBS | Task | Type | Duration | Start | Finish | Predecessors | Resources | Work |
| --- | --- | --- | --- | --- | --- | --- | --- | --- | --- |
| 137 | 6.8.13 | **Atlas-1000 HU set-up** |  | 19d? | 2011-12-27 | 2012-01-20 |  |  | 152h |
| 138 | 6.8.13.1 | Prepare and install proper Ubuntu configuration | manual | 5d? | 2011-12-27 | 2012-01-02 |  | Bratanova Elena | 40h |
| 139 | 6.8.13.2 | Configure Ubuntu environment | manual | 4d? | 2011-12-27 | 2011-12-30 | 138 | Bratanova Elena | 32h |
| 140 | 6.8.13.3 | Configure and run Wi-Fi module | manual | 5d? | 2011-12-27 | 2012-01-02 | 139 | Bratanova Elena | 40h |
| 141 | 6.8.13.4 | Configure and run other infrastructure modules | manual | 5d? | 2011-12-27 | 2012-01-02 | 140 | Bratanova Elena | 40h |
| 142 | 6.8.14 | Интеграция Штурмана в качестве навигационного приложения для Linux части | manual | 1d? | 2011-12-27 | 2011-12-27 |  | Plachkov, Vyacheslav | 8h |
| 143 | 6.8.15 | Интеграция Штурмана в качестве навигационного приложения для Android части | manual | 1d | 2011-12-27 | 2011-12-27 |  | Kramchaninov, Pavel | 8h |
| 144 | 6.8.16 | Утвердить требования о том, как надо делать задачу о начальной аутентификации устройств. Определить как requirements нам тут нужно выполнить | manual | 1d? | 2011-12-27 | 2011-12-27 |  | Lobashevskiy, Dmitriy | 8h |
| 145 | 6.8.17 | Make another demo for Visteon when Applications demo is available | manual | 1d? | 2011-12-27 | 2011-12-27 |  | Shvalik Yuriy | 8h |
| 146 | 6.8.18 | Daemons communication reconnect in case of carrier drop | manual | 2d | 2011-12-27 | 2011-12-28 |  | Ilin, Pavel | 16h |
| 147 | 6.8.19 | Enable Wi-Fi connection between 2 sides through AXIS | manual | 4d | 2011-12-27 | 2011-12-30 |  | Ilin, Pavel | 32h |
| 148 | 6.8.20 | **SDK** |  | 22d? | 2011-12-27 | 2012-01-25 |  |  | 176h |
| 149 | 6.8.20.1 | Review IDL common language for both levels | manual | 3d? | 2011-12-27 | 2011-12-29 |  | Lobashevskiy, Dmitriy | 24h |
| 150 | 6.8.20.2 | How-to examples | manual | 3d? | 2011-12-27 | 2011-12-29 |  | Lobashevskiy, Dmitriy | 24h |
| 151 | 6.8.20.3 | Stub files (profile teamplate) | manual | 2d? | 2011-12-27 | 2011-12-28 |  | Lobashevskiy, Dmitriy | 16h |
| 152 | 6.8.20.4 | Verification how different IDE support our build mechanisms | manual | 1d? | 2011-12-27 | 2011-12-27 |  | Lobashevskiy, Dmitriy | 8h |
| 153 | 6.8.20.5 | API describtion | manual | 4d? | 2011-12-27 | 2011-12-30 |  | Lobashevskiy, Dmitriy | 32h |
| 154 | 6.8.20.6 | Build process description | manual | 4d? | 2011-12-27 | 2011-12-30 |  | Lobashevskiy, Dmitriy | 32h |
| 155 | 6.8.20.7 | SDK review and verification | manual | 5d? | 2011-12-27 | 2012-01-02 |  | Mikhail Prossuntsov | 40h |
| 156 | 6.8.21 | IDL code review session | manual | 5d? | 2011-12-27 | 2012-01-02 |  | Khait Konstantin; Mikhail Prossuntsov | 80h |
| 157 | 6.8.22 | Review HAL/L0 documentation and architecture | manual | 5d? | 2011-12-27 | 2012-01-02 |  | Mikhail Prossuntsov | 40h |
| 158 | 6.8.23 | Review and update PAD documentation and architecture | manual | 5d? | 2011-12-27 | 2012-01-02 |  | Mikhail Prossuntsov | 40h |
| 159 | 6.8.24 | Review and update IDL documentation and architecture | manual | 5d? | 2011-12-27 | 2012-01-02 |  | Mikhail Prossuntsov | 40h |
| 160 | 6.8.25 | Review Services/Profiles documentation and architecture | manual | 5d? | 2011-12-27 | 2012-01-02 |  | Mikhail Prossuntsov | 40h |
| 161 | 6.8.26 | Proposition in Genivi | manual | 1d | 2011-12-27 | 2011-12-27 |  |  |  |
| 162 | 6.8.27 | Proposition in CCC | manual | 1d | 2011-12-27 | 2011-12-27 |  |  |  |
| 163 | 6.8.28 | Marketing presentation | manual | 1d | 2011-12-27 | 2011-12-27 |  |  |  |
| 164 | 6.8.29 | press release | manual | 1d | 2011-12-27 | 2011-12-27 |  |  |  |
| 165 | 6.8.30 | Proposal for Harman | manual | 1d | 2011-12-27 | 2011-12-27 |  |  |  |
| 166 | 6.8.31 | Proposal for Ford | manual | 1d | 2011-12-27 | 2011-12-27 |  |  |  |
| 167 | 6.8.32 | Proposal for Electrobit | manual | 1d | 2011-12-27 | 2011-12-27 |  |  |  |
| 168 | 6.8.33 | Public offering | manual | 1d | 2011-12-27 | 2011-12-27 |  |  |  |
| 169 | 6.8.34 | Appl in Market | manual | 1d | 2011-12-27 | 2011-12-27 |  |  |  |
| 170 | 6.8.35 | Partly code open source | manual | 1d | 2011-12-27 | 2011-12-27 |  |  |  |
| 171 | 6.8.36 | Web Portal (twitter, blog) | manual | 1d | 2011-12-27 | 2011-12-27 |  |  |  |

Notes:
- 144: Обсудить с Костей. Пересмотреть письмо Димы
- 146: В случае если ВайФай соединение было утеряно, а затем снова восстановлено, демон должен правильно обрабатывать ситуацию и продолжать работу
- 147: Добавить функционал, чтоб Wi-Fi соединение между двумя AXIS устройствами настраивается автоматически AXIS демоном. То есть нет необходимости настраивать WiFi сначала вручную через Andorid и Linux. AXIS все время слушает какие устройства присутсвую в сети и как только видит другое AXIS устройство, автоматически устанавливает соединение.
