Schedule from MS Project, 2011-11-04 to 2012-02-17, A marks actual dates.

## Calendars

- Standard: Mon-Fri 08:00-12:00, 13:00-17:00; Sat-Sun off.

## Resources

| Resource | Group |
| --- | --- |
| Kramchaninov, Pavel | Киевский филиал |
| Ilin, Pavel | Одесский филиал |
| Skidanov, Kirill | Одесский филиал |
| Lobashevskiy, Dmitriy | Одесский филиал |
| Plachkov, Vyacheslav | Одесский филиал |
| Krupsky Vladimir | СПб |
| Dolmatova Oksana | Питерский филиал |
| Derbikov Andrey | СПб филиал |
| Bratanova Elena | Питерский филиал |
| Shvalik Yuriy | Одесский отдел Центра специальных систем |
| Khait Konstantin |  |
| Saenko Elena | Одесский филиал |
| Mikhail Prossuntsov | СПб |
| Derbikov Andrey |  |

## Schedule

| ID | WBS | Task | Duration | Start | Finish | Complete | Remaining | Total slack | Free slack | Constraint | Resources | Work | Actual work |
| --- | --- | --- | --- | --- | --- | --- | --- | --- | --- | --- | --- | --- | --- |
| 1 | 1 | **AXIS Car Home demo application v1.0** | 25d | 2011-11-22 A | 2011-12-26 | 67% | 8.37d | 38d | 0d |  |  | 992h | 660h |
| 2 | 1.1 | **HU Car Home application** | 24.25d | 2011-11-22 A | 2011-12-26 | 51% | 11.92d | 38.75d |  |  |  | 240h | 122h |
| 3 | 1.1.1 | Basic application with navigation bar (no design) | 3d | 2011-11-22 A | 2011-11-24 A | 100% |  |  |  | start no earlier than 2011-11-22 | Plachkov, Vyacheslav | 24h | 24h |
| 4 | 1.1.2 | Media application (no design) | 2d | 2011-11-25 A | 2011-11-28 A | 100% |  |  |  | start no earlier than 2011-11-25 | Plachkov, Vyacheslav | 16h | 16h |
| 5 | 1.1.3 | Browser application (no design) | 2d | 2011-11-29 A | 2011-11-30 A | 100% |  |  |  | start no earlier than 2011-11-29 | Plachkov, Vyacheslav | 16h | 16h |
| 6 | 1.1.4 | Google maps Navigation application (no design) | 3d | 2011-12-02 A | 2011-12-06 | 50% | 1.5d | 52d |  | start no earlier than 2011-12-02 | Plachkov, Vyacheslav | 24h | 12h |
| 7 | 1.1.5 | Adaptation of Demo application to the graphical design | 3d | 2011-12-07 A | 2011-12-09 | 25% | 2.25d | 49d |  | start no earlier than 2011-12-07 | Plachkov, Vyacheslav | 24h | 6h |
| 8 | 1.1.6 | AXIS integration to media player | 8d | 2011-12-12 A | 2011-12-21 | 50% | 4d | 41d |  | start no earlier than 2011-12-12 | Plachkov, Vyacheslav | 64h | 32h |
| 9 | 1.1.7 | Updating of generic VNC lib functionality for Linux | 3d | 2011-12-20 A | 2011-12-22 | 25% | 2.25d | 40d |  | start no earlier than 2011-12-20 | Skidanov, Kirill | 24h | 6h |
| 10 | 1.1.8 | AXIS screen sharing integration to other applications | 1d | 2011-12-23 | 2011-12-23 |  |  | 39d |  | start no earlier than 2011-12-23 | Plachkov, Vyacheslav | 8h |  |
| 11 | 1.1.9 | Testing, bug-fixing | 5d | 2011-12-19 A | 2011-12-26 | 25% | 3.75d | 38.75d |  | start no earlier than 2011-12-19 | Plachkov, Vyacheslav | 40h | 10h |
| 12 | 1.2 | **Android Car Home application** | 25d | 2011-11-22 A | 2011-12-26 | 48% | 13.09d | 38d |  |  |  | 256h | 122h |
| 13 | 1.2.1 | Basic application with navigation bar (no design) | 3d | 2011-11-22 A | 2011-11-24 A | 100% |  |  |  | start no earlier than 2011-11-22 | Kramchaninov, Pavel | 24h | 24h |
| 14 | 1.2.2 | Media application (no design) | 2d | 2011-11-25 A | 2011-11-28 A | 100% |  |  |  | start no earlier than 2011-11-25 | Kramchaninov, Pavel | 16h | 16h |
| 15 | 1.2.3 | Browser application (no design) | 2d | 2011-11-29 A | 2011-11-30 A | 100% |  |  |  | start no earlier than 2011-11-29 | Kramchaninov, Pavel | 16h | 16h |
| 16 | 1.2.4 | Navigation application (no design) | 2d | 2011-12-01 A | 2011-12-02 | 75% | 0.5d | 54d |  | start no earlier than 2011-12-01 | Kramchaninov, Pavel | 16h | 12h |
| 17 | 1.2.5 | Adaptation of Demo application to the graphical design | 5d | 2011-12-05 A | 2011-12-09 | 50% | 2.5d | 49d |  | start no earlier than 2011-12-05 | Kramchaninov, Pavel | 40h | 20h |
| 18 | 1.2.6 | AXIS integration to media player | 8d | 2011-12-12 A | 2011-12-21 | 25% | 6d | 41d |  | start no earlier than 2011-12-12 | Kramchaninov, Pavel | 64h | 16h |
| 19 | 1.2.7 | Updating of generic VNC lib functionality for Android | 3d | 2011-12-20 A | 2011-12-22 | 25% | 2.25d | 40d |  | start no earlier than 2011-12-20 | Ilin, Pavel | 24h | 6h |
| 20 | 1.2.8 | AXIS screen sharing integration to other applications | 1d | 2011-12-22 | 2011-12-22 |  |  | 40d |  | start no earlier than 2011-12-22 | Kramchaninov, Pavel | 8h |  |
| 21 | 1.2.9 | Testing, bug-fixing | 6d | 2011-12-19 A | 2011-12-26 | 25% | 4.5d | 38d |  | start no earlier than 2011-12-19 | Kramchaninov, Pavel | 48h | 12h |
| 22 | 1.3 | **HAL/L0 enhancements** | 9d | 2011-11-29 A | 2011-12-09 A | 100% |  |  |  |  |  | 72h | 72h |
| 23 | 1.3.1 | Request another AXIS side by which IP adress we're visible | 1d | 2011-11-29 A | 2011-11-29 A | 100% |  |  |  | start no earlier than 2011-11-29 | Ilin, Pavel | 8h | 8h |
| 24 | 1.3.2 | Add verification if application is already running on other side | 8d | 2011-11-30 A | 2011-12-09 A | 100% |  |  |  | start no earlier than 2011-11-30 | Ilin, Pavel | 64h | 64h |

Notes:
- 6: На данном этапе роль навигации будет исполнять Google Maps просто запущенный через Браузер
- 16: На данном этапе роль навигации будет исполнять Google Maps запускаемый как отдельное приложение

| ID | WBS | Task | Duration | Start | Finish | Complete | Remaining | Total slack | Free slack | Constraint | Resources | Work | Actual work |
| --- | --- | --- | --- | --- | --- | --- | --- | --- | --- | --- | --- | --- | --- |
| 25 | 1.4 | **Freescale HU set-up** | 23d | 2011-11-24 A | 2011-12-26 | 81% | 4.38d | 38d |  |  |  | 168h | 136h |
| 26 | 1.4.1 | Prepare and install proper Ubuntu configuration | 5d | 2011-11-24 A | 2011-11-30 A | 100% |  |  |  | start no earlier than 2011-11-24 | Derbikov Andrey | 40h | 40h |
| 27 | 1.4.2 | Configure Ubuntu environment | 3d | 2011-12-01 A | 2011-12-05 A | 100% |  |  |  | start no earlier than 2011-12-01 | Derbikov Andrey | 24h | 24h |
| 28 | 1.4.3 | Run AXIS baseline on HU | 5d | 2011-12-06 A | 2011-12-12 A | 100% |  |  |  | start no earlier than 2011-12-06 | Derbikov Andrey | 40h | 40h |
| 29 | 1.4.4 | Configure and run Wi-Fi module | 6d | 2011-12-15 A | 2011-12-22 | 50% | 3d | 40d |  | start no earlier than 2011-12-15 | Derbikov Andrey | 48h | 24h |
| 30 | 1.4.5 | AXIS baseline testing, problem reporting to Odessa team | 2d | 2011-12-23 A | 2011-12-26 | 50% | 1d | 38d |  | start no earlier than 2011-12-23 | Derbikov Andrey | 16h | 8h |
| 31 | 1.5 | **Design preparation** | 9d | 2011-12-12 A | 2011-12-22 | 89% | 1d | 40d |  |  |  | 72h | 64h |
| 32 | 1.5.1 | Finalise DriveDorid design for Ubuntu | 5d | 2011-12-12 A | 2011-12-16 A | 100% |  |  |  | start no earlier than 2011-12-12 | Dolmatova Oksana | 40h | 40h |
| 33 | 1.5.2 | Make picture cutting | 4d | 2011-12-19 A | 2011-12-22 | 75% | 1d | 40d |  | start no earlier than 2011-12-19 | Dolmatova Oksana | 32h | 24h |
| 34 | 1.6 | **Processes preparation** | 22d | 2011-11-24 A | 2011-12-23 | 78% | 4.78d | 39d |  |  |  | 184h | 144h |
| 35 | 1.6.1 | Project introduction | 2d | 2011-11-24 A | 2011-11-25 A | 100% |  |  |  | start no earlier than 2011-11-24 | Saenko Elena | 16h | 16h |
| 36 | 1.6.2 | AXIS documentation research | 2d | 2011-11-28 A | 2011-11-29 A | 100% |  |  |  | start no earlier than 2011-11-28 | Saenko Elena | 16h | 16h |
| 37 | 1.6.3 | Requirements management definition | 3d | 2011-11-30 A | 2011-12-02 A | 100% |  |  |  | start no earlier than 2011-11-30 | Saenko Elena | 24h | 24h |
| 38 | 1.6.4 | Specification and traceability creation | 5d | 2011-12-05 A | 2011-12-09 A | 100% |  |  |  | start no earlier than 2011-12-05 | Saenko Elena | 40h | 40h |
| 39 | 1.6.5 | Creation of test scenarios lists | 5d | 2011-12-12 A | 2011-12-16 | 50% | 2.5d | 44d |  | start no earlier than 2011-12-12 | Saenko Elena | 40h | 20h |
| 40 | 1.6.6 | Test plan definition | 5d | 2011-12-19 A | 2011-12-23 | 50% | 2.5d | 39d |  | start no earlier than 2011-12-19 | Saenko Elena | 40h | 20h |
| 41 | 1.6.7 | Prepare CMP document | 1d | 2011-12-09 A | 2011-12-09 A | 100% |  |  |  | start no earlier than 2011-12-09 | Derbikov Andrey | 8h | 8h |
| 42 | 2 | **AXIS Car Home demo application v1.5** | 14d | 2011-12-27 | 2012-01-13 |  |  | 24d | 0d |  |  | 456h |  |
| 43 | 2.1 | **HU Car Home application enhancement** | 14d | 2011-12-27 | 2012-01-13 |  |  | 24d |  |  |  | 112h |  |
| 44 | 2.1.1 | Testing, bug-fixing | 14d | 2011-12-27 | 2012-01-13 |  |  | 24d |  | start no earlier than 2011-12-27 | Plachkov, Vyacheslav | 112h |  |
| 45 | 2.2 | **Android Car Home application enhancement** | 14d | 2011-12-27 | 2012-01-13 |  |  | 24d |  |  |  | 112h |  |
| 46 | 2.2.1 | Testing, bug-fixing | 12d | 2011-12-27 | 2012-01-11 |  |  | 26d |  | start no earlier than 2011-12-27 | Kramchaninov, Pavel | 96h |  |
| 47 | 2.2.2 | Preparation for Android market promotion | 2d | 2012-01-12 | 2012-01-13 |  |  | 24d |  | start no earlier than 2012-01-12 | Kramchaninov, Pavel | 16h |  |
| 48 | 2.3 | **Car Home application HU testing** | 14d | 2011-12-27 | 2012-01-13 |  |  | 24d |  |  |  | 232h |  |
| 49 | 2.3.1 | AXIS baseline testing, problem reporting to Odessa team | 14d | 2011-12-27 | 2012-01-13 |  |  | 24d |  | start no earlier than 2011-12-27 | Bratanova Elena; Dolmatova Oksana | 224h |  |
| 50 | 2.3.2 | Conduct demonstration for Electrobit | 1d | 2011-12-29 | 2011-12-29 |  |  | 35d |  | start no earlier than 2011-12-29 | Shvalik Yuriy | 8h |  |

| ID | WBS | Task | Duration | Start | Finish | Complete | Remaining | Total slack | Constraint | Resources | Work | Actual work |
| --- | --- | --- | --- | --- | --- | --- | --- | --- | --- | --- | --- | --- |
| 51 | 3 | **AXIS Car Home demo application v2.0** | 75d | 2011-11-04 A | 2012-02-16 | 20% | 59.72d | 0d |  |  | 632h | 128.8h |
| 52 | 3.1 | Daemons communication reconnect in case of carrier drop | 4d | 2012-01-03 | 2012-01-06 |  |  | 29d | start no earlier than 2012-01-03 | Ilin, Pavel | 32h |  |
| 53 | 3.2 | Enable Wi-Fi connection between 2 sides through AXIS | 4d | 2012-01-09 | 2012-01-12 |  |  | 25d | start no earlier than 2012-01-09 | Ilin, Pavel | 32h |  |
| 54 | 3.3 | **VNC lib integration into VNC profile** | 8d | 2012-01-13 | 2012-01-24 |  |  | 17d |  |  | 64h |  |
| 55 | 3.3.1 | VNC lib code adaptation for frame-buffer addressing | 6d | 2012-01-13 | 2012-01-20 |  |  | 19d | start no earlier than 2012-01-13 | Ilin, Pavel | 48h |  |
| 56 | 3.3.2 | Lib integration to VNC profile | 2d | 2012-01-23 | 2012-01-24 |  |  | 17d | start no earlier than 2012-01-23 | Ilin, Pavel | 16h |  |
| 57 | 3.4 | **VNC Speed Optimisation** | 15d | 2011-12-27 | 2012-01-16 |  |  | 23d |  |  | 120h |  |
| 58 | 3.4.1 | Knowledge overtaking from Pilin about the problem | 1d | 2011-12-27 | 2011-12-27 |  |  | 37d | start no earlier than 2011-12-27 | Derbikov Andrey | 8h |  |
| 59 | 3.4.2 | VCN client code investigation | 5d | 2011-12-28 | 2012-01-03 |  |  | 32d | start no earlier than 2011-12-28 | Derbikov Andrey | 40h |  |
| 60 | 3.4.3 | Problem understanding | 2d | 2012-01-04 | 2012-01-05 |  |  | 30d | start no earlier than 2012-01-04 | Derbikov Andrey | 16h |  |
| 61 | 3.4.4 | Finding solution | 1d | 2012-01-06 | 2012-01-06 |  |  | 29d | start no earlier than 2012-01-06 | Derbikov Andrey | 8h |  |
| 62 | 3.4.5 | Problem fixing | 6d | 2012-01-09 | 2012-01-16 |  |  | 23d | start no earlier than 2012-01-09 | Derbikov Andrey | 48h |  |
| 63 | 3.5 | **PAD refactoring** | 11d | 2011-12-20 A | 2012-01-03 | 57% | 4.77d | 32d |  |  | 72h | 40.8h |
| 64 | 3.5.1 | Lib Event integration | 2d | 2011-12-20 A | 2011-12-21 | 85% | 0.3d | 41d | start no earlier than 2011-12-20 | Lobashevskiy, Dmitriy | 16h | 13.6h |
| 65 | 3.5.2 | Socket refactoring | 2d | 2011-12-22 A | 2011-12-23 | 85% | 0.3d | 39d | start no earlier than 2011-12-22 | Lobashevskiy, Dmitriy | 16h | 13.6h |
| 66 | 3.5.3 | New socket interfaces definition | 2d | 2011-12-26 A | 2011-12-27 | 85% | 0.3d | 37d | start no earlier than 2011-12-26 | Lobashevskiy, Dmitriy | 16h | 13.6h |
| 67 | 3.5.4 | Testing | 2d | 2011-12-28 | 2012-01-02 |  |  | 33.5d | start no earlier than 2011-12-28 | Lobashevskiy, Dmitriy | 16h |  |
| 68 | 3.5.5 | PAD interface adaptation after refactoring | 1d | 2012-01-03 | 2012-01-03 |  |  | 32d | start no earlier than 2012-01-03 | Lobashevskiy, Dmitriy | 8h |  |
| 69 | 3.6 | **Code generator finalization** | 48d | 2011-11-04 A | 2012-01-10 | 73% | 12.92d | 27d |  |  | 104h | 76h |
| 70 | 3.6.1 | Interfaces generation for C | 4d | 2011-11-22 A | 2011-11-25 A | 100% |  |  | start no earlier than 2011-11-22 | Lobashevskiy, Dmitriy | 32h | 32h |
| 71 | 3.6.2 | Interfaces generation for Java | 4d | 2011-11-04 A | 2011-11-09 | 75% | 1d | 71d | start no earlier than 2011-11-04 | Lobashevskiy, Dmitriy | 32h | 24h |
| 72 | 3.6.3 | Testing | 5d | 2012-01-04 A | 2012-01-10 | 50% | 2.5d | 27d | start no earlier than 2012-01-04 | Lobashevskiy, Dmitriy | 40h | 20h |
| 73 | 3.7 | **Profile repository** | 7d | 2012-01-11 | 2012-01-19 |  |  | 20d |  |  | 56h |  |
| 74 | 3.7.1 | Profile repository definition | 5d | 2012-01-11 | 2012-01-17 |  |  | 22d | start no earlier than 2012-01-11 | Lobashevskiy, Dmitriy | 40h |  |
| 75 | 3.7.2 | Definition of profile list based on HU/Android configuration | 2d | 2012-01-18 | 2012-01-19 |  |  | 20d | start no earlier than 2012-01-18 | Lobashevskiy, Dmitriy | 16h |  |

Notes:
- 54: Библиотека VNC должна быть интегрирована в VNC profile. То есть не должно быть необходимости вначале устанавливать VNC клиент. VNC должен быть "спрятан" внутри профайла
- 68: Поменялись интерфейсы кодогенератора. Необходимо возобновить соотвесвие их с PDA-ом. Применить namespaces

| ID | WBS | Task | Duration | Start | Finish | Complete | Remaining | Total slack | Free slack | Constraint | Resources | Work | Actual work |
| --- | --- | --- | --- | --- | --- | --- | --- | --- | --- | --- | --- | --- | --- |
| 76 | 3.8 | **Axis queue** | 4d | 2012-01-20 | 2012-01-25 |  |  | 16d |  |  |  | 32h |  |
| 77 | 3.8.1 | Axis queue architucture preparation | 2d | 2012-01-20 | 2012-01-23 |  |  | 18d |  | start no earlier than 2012-01-20 | Lobashevskiy, Dmitriy | 16h |  |
| 78 | 3.8.2 | Implementation and integration with RPC | 2d | 2012-01-24 | 2012-01-25 |  |  | 16d |  | start no earlier than 2012-01-24 | Lobashevskiy, Dmitriy | 16h |  |
| 79 | 3.9 | Remote file system profile | 3d | 2012-01-26 A | 2012-01-30 | 50% | 1.5d | 13d |  | start no earlier than 2012-01-26 | Lobashevskiy, Dmitriy | 24h | 12h |
| 80 | 3.10 | Audio/Video remote control profile | 3d | 2012-02-01 | 2012-02-03 |  |  | 9d |  | start no earlier than 2012-02-01 | Lobashevskiy, Dmitriy | 24h |  |
| 81 | 3.11 | Voice command transition profile | 5d | 2012-02-06 | 2012-02-10 |  |  | 4d |  | start no earlier than 2012-02-06 | Lobashevskiy, Dmitriy | 40h |  |
| 82 | 3.12 | Application repository | 4d | 2012-02-13 | 2012-02-16 |  |  | 0d |  | start no earlier than 2012-02-13 | Lobashevskiy, Dmitriy | 32h |  |
| 83 | 4 | **Process activities** | 12d | 2011-12-12 A | 2011-12-27 | 45% | 6.6d | 37d |  |  |  | 96h | 43.2h |
| 84 | 4.1 | **Move SVN to gitHUB** | 12d | 2011-12-12 A | 2011-12-27 | 45% | 6.6d | 37d |  |  |  | 96h | 43.2h |
| 85 | 4.1.1 | Test access and possible infrastructure problems from Odessa and Piter locations | 1d | 2011-12-12 A | 2011-12-12 A | 100% |  |  |  | start no earlier than 2011-12-12 | Bratanova Elena | 8h | 8h |
| 86 | 4.1.2 | Move up-to-date baseline version to gitHub | 2d | 2011-12-13 A | 2011-12-14 | 50% | 1d | 46d |  | start no earlier than 2011-12-13 | Bratanova Elena | 16h | 8h |
| 87 | 4.1.3 | Prepare process description document | 4d | 2011-12-15 A | 2011-12-20 | 85% | 0.6d | 42d |  | start no earlier than 2011-12-15 | Bratanova Elena | 32h | 27.2h |
| 88 | 4.1.4 | Try first submits, make branches integration back to baseline repository | 3d | 2011-12-21 | 2011-12-23 |  |  | 39d |  | start no earlier than 2011-12-21 | Bratanova Elena | 24h |  |
| 89 | 4.1.5 | Make final review and acceptance of CMP | 2d | 2011-12-26 | 2011-12-27 |  |  | 37d |  | start no earlier than 2011-12-26 | Mikhail Prossuntsov | 16h |  |
| 90 | 5 | **Marketing** | 23d | 2011-12-15 A | 2012-01-16 | 18% | 18.84d | 23d |  |  |  | 816h | 208h |
| 91 | 5.1 | **Marketing presentation** | 9d | 2011-12-15 A | 2011-12-27 | 39% | 5.5d | 37d | 0d |  |  | 160h | 56h |
| 92 | 5.1.1 | AXIS marketing presentation preparation | 7d | 2011-12-15 A | 2011-12-23 | 50% | 3.5d | 39d |  | start no earlier than 2011-12-15 | Khait Konstantin; Mikhail Prossuntsov | 112h | 56h |
| 93 | 5.1.2 | Verification and review | 2d | 2011-12-26 | 2011-12-27 |  |  | 37d |  | start no earlier than 2011-12-26 | Khait Konstantin; Mikhail Prossuntsov; Shvalik Yuriy | 48h |  |
| 94 | 5.2 | **Demo video** | 17d | 2011-12-21 | 2012-01-12 |  |  | 25d | 0d |  |  | 136h |  |
| 95 | 5.2.1 | Schedule activities with video operator | 2d | 2011-12-21 | 2011-12-22 |  |  | 40d |  | start no earlier than 2011-12-21 | Mikhail Prossuntsov | 16h |  |
| 96 | 5.2.2 | Find actors | 3d | 2011-12-23 | 2011-12-27 |  |  | 37d |  | start no earlier than 2011-12-23 | Mikhail Prossuntsov | 24h |  |
| 97 | 5.2.3 | Finalise script | 4d | 2011-12-28 | 2012-01-02 |  |  | 33d |  | start no earlier than 2011-12-28 | Mikhail Prossuntsov | 32h |  |
| 98 | 5.2.4 | Shoot video | 2d | 2012-01-03 | 2012-01-04 |  |  | 31d |  | start no earlier than 2012-01-03 | Mikhail Prossuntsov | 16h |  |
| 99 | 5.2.5 | Post-production | 5d | 2012-01-05 | 2012-01-11 |  |  | 26d |  | start no earlier than 2012-01-05 | Mikhail Prossuntsov | 40h |  |
| 100 | 5.2.6 | Review | 1d | 2012-01-12 | 2012-01-12 |  |  | 25d |  | start no earlier than 2012-01-12 | Mikhail Prossuntsov | 8h |  |

Notes:
- 94: Обсудить втроем сценарий и как этот ролик вообще можно снимать. Хорошо бы снять простое видео в лаборатории, которое показывает просто технологии

| ID | WBS | Task | Type | Duration | Start | Finish | Predecessors | Complete | Remaining | Total slack | Free slack | Constraint | Resources | Work | Actual work |
| --- | --- | --- | --- | --- | --- | --- | --- | --- | --- | --- | --- | --- | --- | --- | --- |
| 101 | 5.3 | **Axis web portal preparation** |  | 23d | 2011-12-15 A | 2012-01-16 |  | 8% | 21.08d | 23d | 0d |  | Mikhail Prossuntsov | 432h | 112h |
| 102 | 5.3.1 | Arange domain name AXISautomotive |  | 2d | 2011-12-15 A | 2011-12-16 A |  | 100% |  |  |  | start no earlier than 2011-12-15 | Mikhail Prossuntsov | 16h | 16h |
| 103 | 5.3.2 | Evaluate and prepare content |  | 7d | 2011-12-22 | 2011-12-30 |  |  |  | 34d |  | start no earlier than 2011-12-22 | Mikhail Prossuntsov; Shvalik Yuriy | 112h |  |
| 104 | 5.3.3 | Portal design preparation with Luxoft marketing |  | 5d | 2011-12-22 | 2011-12-28 |  |  |  | 36d |  | start no earlier than 2011-12-22 | Dolmatova Oksana | 40h |  |
| 105 | 5.3.4 | Site coding |  | 5d | 2012-01-03 | 2012-01-09 |  |  |  | 28d |  | start no earlier than 2012-01-03 | Mikhail Prossuntsov | 40h |  |
| 106 | 5.3.5 | Verification and testing |  | 5d | 2012-01-10 | 2012-01-16 |  |  |  | 23d |  | start no earlier than 2012-01-10 | Mikhail Prossuntsov | 40h |  |
| 107 | 5.4 | **Documentation update** |  | 8d | 2011-12-19 A | 2011-12-28 |  | 63% | 3d | 36d | 0d |  |  | 88h | 40h |
| 108 | 5.4.1 | Review and update AXIS architecture document |  | 5d | 2011-12-19 A | 2011-12-23 A |  | 100% |  |  |  | start no earlier than 2011-12-19 | Mikhail Prossuntsov | 40h | 40h |
| 109 | 5.4.2 | Review and verification |  | 3d | 2011-12-26 | 2011-12-28 |  |  |  | 36d |  | start no earlier than 2011-12-26 | Khait Konstantin; Shvalik Yuriy | 48h |  |
| 110 | 6 | **Releases** |  | 74d? | 2011-11-07 | 2012-02-17 |  |  |  | 0d |  |  |  | 664h |  |
| 111 | 6.1 | Release R1 | milestone | 0d | 2011-12-27 | 2011-12-27 | 1 |  |  | 38d |  | start no earlier than 2011-12-27 |  |  |  |
| 112 | 6.2 | Release R2 | milestone | 0d | 2012-01-16 | 2012-01-16 | 42 |  |  | 24d |  | start no earlier than 2012-01-16 |  |  |  |
| 113 | 6.3 | Release R3 | milestone | 0d | 2012-02-17 | 2012-02-17 | 51 |  |  | 0d |  | start no earlier than 2012-02-17 |  |  |  |
| 114 | 6.4 | Demo video readiness | milestone | 0d | 2012-01-13 | 2012-01-13 | 94 |  |  | 25d |  | start no earlier than 2012-01-13 |  |  |  |
| 115 | 6.5 | Web Portal readiness | milestone | 0d | 2012-01-17 | 2012-01-17 | 101 |  |  | 23d |  | start no earlier than 2012-01-17 |  |  |  |
| 116 | 6.6 | Marketing presentation readiness | milestone | 0d | 2011-12-28 | 2011-12-28 | 91 |  |  | 37d |  | start no earlier than 2011-12-28 |  |  |  |
| 117 | 6.7 | Architecture document readiness | milestone | 0d | 2011-12-29 | 2011-12-29 | 107 |  |  | 36d |  | start no earlier than 2011-12-29 |  |  |  |
| 118 | 6.8 | **Dates to be assigned** |  | 19d? | 2011-11-07 | 2011-12-01 |  |  |  | 55d |  |  |  | 664h |  |
| 119 | 6.8.1 | IP Radio feature implementation in Media player |  | 3d | 2011-11-07 | 2011-11-09 |  |  |  | 71d |  |  |  |  |  |
| 120 | 6.8.2 | Comfort application implementation |  | 4d | 2011-11-07 | 2011-11-10 |  |  |  | 70d |  |  |  |  |  |
| 121 | 6.8.3 | Diagnosis application implementation |  | 4d | 2011-11-07 | 2011-11-10 |  |  |  | 70d |  |  |  |  |  |
| 122 | 6.8.4 | Profiles signment by sertificates definition |  | 1d | 2011-11-07 | 2011-11-07 |  |  |  | 73d |  |  |  |  |  |
| 123 | 6.8.5 | IOS |  | 1d? | 2011-11-07 | 2011-11-07 |  |  |  | 73d |  |  |  |  |  |
| 124 | 6.8.6 | Переведение WiKi в порядок |  | 1d? | 2011-11-07 | 2011-11-07 |  |  |  | 73d |  |  |  |  |  |
| 125 | 6.8.7 | Verification of Android side by Mihail |  | 1d? | 2011-11-07 | 2011-11-07 |  |  |  | 73d |  |  |  |  |  |
| 126 | 6.8.8 | DRM existing standarts analyses |  | 1d? | 2011-11-07 | 2011-11-07 |  |  |  | 73d |  |  | Derbikov Andrey | 8h |  |
| 127 | 6.8.9 | Алгоритм авторизации Out of Band устройств |  | 1d? | 2011-11-07 | 2011-11-07 |  |  |  | 73d |  |  |  |  |  |
| 128 | 6.8.10 | Параметрический анализ Clud Services. Где лучше разместить сайт |  | 1d? | 2011-11-07 | 2011-11-07 |  |  |  | 73d |  |  |  |  |  |
| 129 | 6.8.11 | Описание Use Cases по правильному пэйрингу HU и AXIS |  | 1d? | 2011-11-07 | 2011-11-07 |  |  |  | 73d |  |  |  |  |  |
| 130 | 6.8.12 | Поддержка в Андроид части DriveDroid различных разрешений (масштабирование текстур) |  | 1d? | 2011-11-07 | 2011-11-07 |  |  |  | 73d |  |  | Kramchaninov, Pavel | 8h |  |

Notes:
- 126: Необходимо понять какие есть стандарты в индустрии на данный момент

| ID | WBS | Task | Duration | Start | Finish | Predecessors | Total slack | Free slack | Resources | Work |
| --- | --- | --- | --- | --- | --- | --- | --- | --- | --- | --- |
| 131 | 6.8.13 | **Atlas-1000 HU set-up** | 19d? | 2011-11-07 | 2011-12-01 |  | 55d |  |  | 152h |
| 132 | 6.8.13.1 | Prepare and install proper Ubuntu configuration | 5d? | 2011-11-07 | 2011-11-11 |  | 55d | 0d | Bratanova Elena | 40h |
| 133 | 6.8.13.2 | Configure Ubuntu environment | 4d? | 2011-11-14 | 2011-11-17 | 132 | 55d | 0d | Bratanova Elena | 32h |
| 134 | 6.8.13.3 | Configure and run Wi-Fi module | 5d? | 2011-11-18 | 2011-11-24 | 133 | 55d | 0d | Bratanova Elena | 40h |
| 135 | 6.8.13.4 | Configure and run other infrastructure modules | 5d? | 2011-11-25 | 2011-12-01 | 134 | 55d |  | Bratanova Elena | 40h |
| 136 | 6.8.14 | Интеграция Штурмана в качестве навигационного приложения для Linux части | 1d? | 2011-11-07 | 2011-11-07 |  | 73d |  | Plachkov, Vyacheslav | 8h |
| 137 | 6.8.15 | Интеграция Штурмана в качестве навигационного приложения для Android части | 1d | 2011-11-07 | 2011-11-07 |  | 73d |  | Kramchaninov, Pavel | 8h |
| 138 | 6.8.16 | Утвердить требования о том, как надо делать задачу о начальной аутентификации устройств. Определить как requirements нам тут нужно выполнить | 1d? | 2011-11-07 | 2011-11-07 |  | 73d |  | Lobashevskiy, Dmitriy | 8h |
| 139 | 6.8.17 | Make another demo for Visteon when Applications demo is available | 1d? | 2011-11-07 | 2011-11-07 |  | 73d |  | Shvalik Yuriy | 8h |
| 140 | 6.8.18 | Daemons communication reconnect in case of carrier drop | 2d | 2011-11-07 | 2011-11-08 |  | 72d |  | Ilin, Pavel | 16h |
| 141 | 6.8.19 | Enable Wi-Fi connection between 2 sides through AXIS | 4d | 2011-11-07 | 2011-11-10 |  | 70d |  | Ilin, Pavel | 32h |
| 142 | 6.8.20 | **SDK** | 5d? | 2011-11-07 | 2011-11-11 |  | 69d |  |  | 176h |
| 143 | 6.8.20.1 | Review IDL common language for both levels | 3d? | 2011-11-07 | 2011-11-09 |  | 71d |  | Lobashevskiy, Dmitriy | 24h |
| 144 | 6.8.20.2 | How-to examples | 3d? | 2011-11-07 | 2011-11-09 |  | 71d |  | Lobashevskiy, Dmitriy | 24h |
| 145 | 6.8.20.3 | Stub files (profile teamplate) | 2d? | 2011-11-07 | 2011-11-08 |  | 72d |  | Lobashevskiy, Dmitriy | 16h |
| 146 | 6.8.20.4 | Verification how different IDE support our build mechanisms | 1d? | 2011-11-07 | 2011-11-07 |  | 73d |  | Lobashevskiy, Dmitriy | 8h |
| 147 | 6.8.20.5 | API describtion | 4d? | 2011-11-07 | 2011-11-10 |  | 70d |  | Lobashevskiy, Dmitriy | 32h |
| 148 | 6.8.20.6 | Build process description | 4d? | 2011-11-07 | 2011-11-10 |  | 70d |  | Lobashevskiy, Dmitriy | 32h |
| 149 | 6.8.20.7 | SDK review and verification | 5d? | 2011-11-07 | 2011-11-11 |  | 69d |  | Mikhail Prossuntsov | 40h |
| 150 | 6.8.21 | IDL code review session | 5d? | 2011-11-07 | 2011-11-11 |  | 69d |  | Khait Konstantin; Mikhail Prossuntsov | 80h |
| 151 | 6.8.22 | Review HAL/L0 documentation and architecture | 5d? | 2011-11-07 | 2011-11-11 |  | 69d |  | Mikhail Prossuntsov | 40h |
| 152 | 6.8.23 | Review and update PAD documentation and architecture | 5d? | 2011-11-07 | 2011-11-11 |  | 69d |  | Mikhail Prossuntsov | 40h |
| 153 | 6.8.24 | Review and update IDL documentation and architecture | 5d? | 2011-11-07 | 2011-11-11 |  | 69d |  | Mikhail Prossuntsov | 40h |
| 154 | 6.8.25 | Review Services/Profiles documentation and architecture | 5d? | 2011-11-07 | 2011-11-11 |  | 69d |  | Mikhail Prossuntsov | 40h |
| 155 | 6.8.26 | Proposition in Genivi | 1d | 2011-11-07 | 2011-11-07 |  | 73d |  |  |  |
| 156 | 6.8.27 | Proposition in CCC | 1d | 2011-11-07 | 2011-11-07 |  | 73d |  |  |  |
| 157 | 6.8.28 | Marketing presentation | 1d | 2011-11-07 | 2011-11-07 |  | 73d |  |  |  |
| 158 | 6.8.29 | press release | 1d | 2011-11-07 | 2011-11-07 |  | 73d |  |  |  |
| 159 | 6.8.30 | Proposal for Harman | 1d | 2011-11-07 | 2011-11-07 |  | 73d |  |  |  |
| 160 | 6.8.31 | Proposal for Ford | 1d | 2011-11-07 | 2011-11-07 |  | 73d |  |  |  |
| 161 | 6.8.32 | Proposal for Electrobit | 1d | 2011-11-07 | 2011-11-07 |  | 73d |  |  |  |
| 162 | 6.8.33 | Public offering | 1d | 2011-11-07 | 2011-11-07 |  | 73d |  |  |  |
| 163 | 6.8.34 | Appl in Market | 1d | 2011-11-07 | 2011-11-07 |  | 73d |  |  |  |
| 164 | 6.8.35 | Partly code open source | 1d | 2011-11-07 | 2011-11-07 |  | 73d |  |  |  |
| 165 | 6.8.36 | Web Portal (twitter, blog) | 1d | 2011-11-07 | 2011-11-07 |  | 73d |  |  |  |

Notes:
- 138: Обсудить с Костей. Пересмотреть письмо Димы
- 140: В случае если ВайФай соединение было утеряно, а затем снова восстановлено, демон должен правильно обрабатывать ситуацию и продолжать работу
- 141: Добавить функционал, чтоб Wi-Fi соединение между двумя AXIS устройствами настраивается автоматически AXIS демоном. То есть нет необходимости настраивать WiFi сначала вручную через Andorid и Linux. AXIS все время слушает какие устройства присутсвую в сети и как только видит другое AXIS устройство, автоматически устанавливает соединение.
